# Gant1

How a schedule from MS Project changed from version to version. A marks actual dates.

## Version 1 (data date 2020-10-04, saved 2020-10-06)

| ID | WBS | Task | Duration | Start | Finish | Predecessors | Complete | Total float | Constraint |
| --- | --- | --- | --- | --- | --- | --- | --- | --- | --- |
| 1 | 1 | **پروژه مواد شیمیایی** | 47d | 2020-10-03 A | 2020-12-06 |  | 5% | 0d |  |
| 2 |  | تهیه و تایید گانت چارت | 2d | 2020-10-03 A | 2020-10-04 A |  | 100% |  |  |
| 3 |  | تهیه نیازمندی های بازار مواد شیمیایی | 2d | 2020-10-05 A | 2020-10-06 A | 2 | 100% |  |  |
| 4 |  | تهیه انتظارات و خروجی نرم افزار برای رفع نیاز بازار | 1d | 2020-10-07 | 2020-10-07 | 3 |  | 33d |  |
| 5 |  | تهیه تحلیل کلی اپلیکیشن و خروجی مطلوب | 6d | 2020-10-10 | 2020-10-17 | 4 |  | 33d |  |
| 6 |  | تایید تحلیل کلی اپلیکیشن و خروجی مطلوب | 1d | 2020-10-18 | 2020-10-18 | 5 |  | 33d |  |
| 7 |  | تعیین ابزار و نرم افزارهای مورد استفاده در تولید | 1d | 2020-10-05 A | 2020-10-05 A | 2 | 100% |  |  |
| 8 |  | تهیه سند تحلیل و شمای کلی | 2d | 2020-10-19 | 2020-10-20 | 6 |  | 33d |  |
| 9 |  | تهیه چک لیست نیازمندی های اپلیکیشن | 1d | 2020-10-06 A | 2020-10-06 A | 2 | 100% |  |  |
| 10 |  | تهیه فرم های ابتدایی جهت ارائه داخلی | 0d | 2020-10-06 A | 2020-10-06 A | 9 | 100% |  |  |
| 11 |  | تهیه سندابزار مورد استفاده و نقشه راه | 1d | 2020-10-06 | 2020-10-06 | 7 |  | 38d |  |
| 12 |  | بررسی و تایید سندابزار مورد استفاده و نقشه راه | 1d | 2020-10-07 | 2020-10-07 | 11 |  | 38d |  |
| 13 |  | تست فرم های ابتدایی و ارائه نظر کارشناسی به صورت رسمی | 1d | 2020-10-07 | 2020-10-07 | 10 |  | 1d |  |
| 14 |  | رفع ایرادات احتمالی | 1d | 2020-10-10 | 2020-10-10 | 13 |  | 1d |  |
| 15 |  | تهیه تحلیل نسخه مقدماتی اپلیکیشن | 1d | 2020-10-10 | 2020-10-10 | 12 |  | 38d |  |
| 16 |  | طراحی بانک داده و پیش نویس سند | 1d | 2020-10-11 | 2020-10-11 | 15 |  | 38d |  |
| 17 |  | شماتیک کلی اپلیکیشن | 1d | 2020-10-11 | 2020-10-11 | 14 |  | 1d |  |
| 18 |  | پیاده سازی نسخه مقدماتی اپلیکیشن | 30d | 2020-10-12 | 2020-11-22 | 17 |  | 1d |  |
| 19 |  | تهیه سند بانک داده | 2d | 2020-10-12 | 2020-10-13 | 16 |  | 38d | start no earlier than 2020-10-12 |
| 20 |  | تست نسخه مقدماتی اپلیکیشن | 30d | 2020-10-14 | 2020-11-24 | 18SS+2d |  | 1d |  |
| 21 |  | تحویل فرم های آماده شده | 30d | 2020-10-25 | 2020-12-05 | 20SS+7d |  | 1d |  |
| 22 |  | رفع خطاهای کشف شده در تست | 10d | 2020-11-23 | 2020-12-06 |  |  | 0d | start no earlier than 2020-11-23 |

## Version 2 (data date 2020-10-04, saved 2020-10-07)

Note of the change: گانت چارت پروژه

Last finish stays 2020-12-06. Complete tasks 5 → 8.

Changed:

| ID | Task | Start | Finish | Duration | Complete | Total float |
| --- | --- | --- | --- | --- | --- | --- |
| 1 | **پروژه مواد شیمیایی** |  |  |  | 5% → 6% |  |
| 11 | تهیه سندابزار مورد استفاده و نقشه راه | 2020-10-06 → 2020-10-07 A (+1d) | 2020-10-06 → 2020-10-07 A (+1d) |  | 0% → 100% | 38d → none |
| 12 | بررسی و تایید سندابزار مورد استفاده و نقشه راه | 2020-10-07 → 2020-10-10 (+3d) | 2020-10-07 → 2020-10-10 (+3d) |  |  | 38d → 37d |
| 13 | تست فرم های ابتدایی و ارائه نظر کارشناسی به صورت رسمی | 2020-10-07 → 2020-10-06 A (-1d) | 2020-10-07 → 2020-10-06 A (-1d) | 1d → 0d | 0% → 100% | 1d → none |
| 14 | رفع ایرادات احتمالی | 2020-10-10 → 2020-10-06 A (-4d) | 2020-10-10 → 2020-10-06 A (-4d) | 1d → 0d | 0% → 100% | 1d → none |
| 15 | تهیه تحلیل نسخه مقدماتی اپلیکیشن | 2020-10-10 → 2020-10-11 (+1d) | 2020-10-10 → 2020-10-11 (+1d) |  |  | 38d → 37d |
| 16 | طراحی بانک داده و پیش نویس سند | 2020-10-11 → 2020-10-12 (+1d) | 2020-10-11 → 2020-10-12 (+1d) |  |  | 38d → 37d |
| 17 | شماتیک کلی اپلیکیشن | 2020-10-11 → 2020-10-07 (-4d) | 2020-10-11 → 2020-10-07 (-4d) |  |  | 1d → 3d |
| 18 | پیاده سازی نسخه مقدماتی اپلیکیشن | 2020-10-12 → 2020-10-10 (-2d) | 2020-11-22 → 2020-11-18 (-4d) |  |  | 1d → 3d |
| 19 | تهیه سند بانک داده | 2020-10-12 → 2020-10-13 (+1d) | 2020-10-13 → 2020-10-14 (+1d) |  |  | 38d → 37d |
| 20 | تست نسخه مقدماتی اپلیکیشن | 2020-10-14 → 2020-10-12 (-2d) | 2020-11-24 → 2020-11-22 (-2d) |  |  | 1d → 3d |
| 21 | تحویل فرم های آماده شده | 2020-10-25 → 2020-10-21 (-4d) | 2020-12-05 → 2020-12-01 (-4d) |  |  | 1d → 3d |

## Version 3 (data date 2020-10-04, saved 2020-10-14)

Last finish 2020-12-06 → 2020-12-15 (+9d). Complete tasks 8 → 12.

Changed:

| ID | Task | Start | Finish | Duration | Complete | Total float | Other |
| --- | --- | --- | --- | --- | --- | --- | --- |
| 1 | **پروژه مواد شیمیایی** |  | 2020-12-06 → 2020-12-15 (+9d) | 47d → 54d | 6% → 15% |  |  |
| 4 | تهیه انتظارات و خروجی نرم افزار برای رفع نیاز بازار | 2020-10-07 A | 2020-10-07 A |  | 0% → 100% | 33d → none |  |
| 5 | تهیه تحلیل کلی اپلیکیشن و خروجی مطلوب | 2020-10-10 A | 2020-10-17 A |  | 0% → 100% | 33d → none |  |
| 12 | بررسی و تایید سندابزار مورد استفاده و نقشه راه | 2020-10-10 → 2020-10-07 A (-3d) | 2020-10-10 → 2020-10-07 A (-3d) | 1d → 0d | 0% → 100% | 37d → none |  |
| 15 | تهیه تحلیل نسخه مقدماتی اپلیکیشن | 2020-10-11 → 2020-10-10 (-1d) | 2020-10-11 → 2020-10-10 (-1d) |  |  | 37d → 45d |  |
| 16 | طراحی بانک داده و پیش نویس سند | 2020-10-12 → 2020-10-11 (-1d) | 2020-10-12 → 2020-10-11 (-1d) |  |  | 37d → 45d |  |
| 17 | شماتیک کلی اپلیکیشن | 2020-10-07 A | 2020-10-07 A |  | 0% → 100% | 3d → none |  |
| 18 | پیاده سازی نسخه مقدماتی اپلیکیشن | 2020-10-10 A |  |  | 0% → 17% | 3d → 19d |  |
| 19 | تهیه سند بانک داده | 2020-10-13 → 2020-10-12 (-1d) | 2020-10-14 → 2020-10-13 (-1d) |  |  | 37d → 45d |  |
| 20 | تست نسخه مقدماتی اپلیکیشن |  | 2020-11-22 → 2020-12-15 (+23d) | 30d → 41d |  | 3d → 0d | constraint none → start no earlier than 2020-09-21 |
