# Gant2

How a schedule from MS Project changed from version to version. A marks actual dates.

## Version 1 (data date 2020-10-04, saved 2020-10-18)

Note of the change: Revert "اصلاح گانت چارت پروژه"

| ID | WBS | Task | Duration | Start | Finish | Predecessors | Complete | Total float | Constraint |
| --- | --- | --- | --- | --- | --- | --- | --- | --- | --- |
| 1 | 1 | **پروژه مواد شیمیایی** | 71d | 2020-10-03 A | 2021-01-09 |  | 12% | 0d |  |
| 2 |  | تهیه و تایید گانت چارت | 2d | 2020-10-03 A | 2020-10-04 A |  | 100% |  |  |
| 3 |  | تهیه نیازمندی های بازار مواد شیمیایی | 2d | 2020-10-05 A | 2020-10-06 A | 2 | 100% |  |  |
| 4 |  | تهیه انتظارات و خروجی نرم افزار برای رفع نیاز بازار | 1d | 2020-10-07 A | 2020-10-07 A | 3 | 100% |  |  |
| 5 |  | تهیه تحلیل کلی اپلیکیشن و خروجی مطلوب | 6d | 2020-10-10 A | 2020-10-17 A | 4 | 100% |  |  |
| 6 |  | تایید تحلیل کلی اپلیکیشن و خروجی مطلوب | 1d | 2020-10-18 | 2020-10-18 | 5 |  | 59d |  |
| 7 |  | تعیین ابزار و نرم افزارهای مورد استفاده در تولید | 1d | 2020-10-05 A | 2020-10-05 A | 2 | 100% |  |  |
| 8 |  | تهیه سند تحلیل و شمای کلی | 2d | 2020-10-19 A | 2020-10-20 A | 6 | 100% |  |  |
| 9 |  | تهیه چک لیست نیازمندی های اپلیکیشن | 1d | 2020-10-06 A | 2020-10-06 A | 2 | 100% |  |  |
| 10 |  | تهیه فرم های ابتدایی جهت ارائه داخلی | 0d | 2020-10-06 A | 2020-10-06 A | 9 | 100% |  |  |
| 11 |  | تهیه سندابزار مورد استفاده و نقشه راه | 1d | 2020-10-07 A | 2020-10-07 A | 7 | 100% |  |  |
| 12 |  | بررسی و تایید سندابزار مورد استفاده و نقشه راه | 0d | 2020-10-07 A | 2020-10-07 A | 11 | 100% |  |  |
| 13 |  | تست فرم های ابتدایی و ارائه نظر کارشناسی به صورت رسمی | 0d | 2020-10-06 A | 2020-10-06 A | 10 | 100% |  |  |
| 14 |  | رفع ایرادات احتمالی | 0d | 2020-10-06 A | 2020-10-06 A | 13 | 100% |  |  |
| 15 |  | تهیه تحلیل نسخه مقدماتی اپلیکیشن | 1d | 2020-10-10 | 2020-10-10 | 12 |  | 62d |  |
| 16 |  | طراحی بانک داده و پیش نویس سند | 1d | 2020-10-11 | 2020-10-11 | 15 |  | 62d |  |
| 17 |  | شماتیک کلی اپلیکیشن | 1d | 2020-10-07 A | 2020-10-07 A | 14 | 100% |  |  |
| 18 | 1.17 | **کد نویسی** | 56d | 2020-10-10 A | 2020-12-26 |  | 14% | 8d |  |
| 19 |  | پیاده سازی زیر ساخت اپلیکیشن | 14d | 2020-10-10 A | 2020-10-27 | 17 | 57% | 7d |  |
| 20 |  | احراز هویت | 2d | 2020-10-28 | 2020-10-31 | 19 |  | 7d |  |
| 21 |  | فرمهای اصلی اپلیکیشن | 14d | 2020-11-01 | 2020-11-18 | 20 |  | 7d |  |
| 22 |  | درگاه پرداخت | 2d | 2020-11-21 | 2020-11-22 | 21 |  | 8d |  |
| 23 |  | وضعیت پرداخت | 2d | 2020-11-23 | 2020-11-24 | 22 |  | 8d |  |
| 24 |  | وضعیت سفارشات | 1d | 2020-11-25 | 2020-11-25 | 23 |  | 8d |  |
| 25 |  | مکان یابی روی نقشه | 1d | 2020-11-28 | 2020-11-28 | 24 |  | 8d |  |
| 26 |  | کیف پول | 2d | 2020-11-29 | 2020-11-30 | 25 |  | 8d |  |
| 27 |  | نحوه تحویل | 3d | 2020-12-01 | 2020-12-05 | 26 |  | 8d |  |
| 28 |  | نظرسنجی | 2d | 2020-12-06 | 2020-12-07 | 27 |  | 8d |  |
| 29 |  | سازکار رفع خطا | 2d | 2020-12-08 | 2020-12-09 | 28 |  | 8d |  |
| 30 |  | اتاق تبادل اطلاعات | 7d | 2020-12-12 | 2020-12-20 | 29 |  | 8d |  |
| 31 |  | کارتابل | 2d | 2020-12-21 | 2020-12-22 | 30 |  | 8d |  |
| 32 |  | موتور جستجو | 2d | 2020-12-23 | 2020-12-26 | 31 |  | 8d |  |
| 33 |  | تهیه سند بانک داده | 2d | 2020-10-12 | 2020-10-13 | 16 |  | 62d | start no earlier than 2020-10-12 |
| 34 |  | تست نسخه مقدماتی اپلیکیشن | 41d | 2020-11-03 | 2020-12-29 | 21SS+2d, 32FF+2d |  | 7d | finish no earlier than 2020-12-29 |
| 35 |  | رفع خطاهای کشف شده در تست | 41d | 2020-11-03 | 2020-12-29 | 34SS |  | 7d | finish no earlier than 2020-10-03 |
| 36 |  | تحویل فرم های آماده شده | 41d | 2020-11-14 | 2021-01-09 | 35SS+7d |  | 0d |  |

## Version 2 (data date 2020-10-04, saved 2020-10-19)

Note of the change: Revert "Update Gant2.mpp"

Last finish stays 2021-01-09.

Changed:

| ID | Task | Start | Finish | Complete | Total float | Predecessors | Other |
| --- | --- | --- | --- | --- | --- | --- | --- |
| 1 | **پروژه مواد شیمیایی** |  |  | 12% → 13% |  |  |  |
| 17 | **کد نویسی** |  |  | 14% → 18% | 8d → 7d |  |  |
| 18 | پیاده سازی زیر ساخت اپلیکیشن |  |  | 57% → 71% |  |  |  |
| 35 | تهیه و تنظیم دستورالعمل کار با بانک داده | 2020-10-11 → 2020-12-27 (+77d) | 2020-10-11 → 2020-12-27 (+77d) |  | 62d → 7d | 15 → 31 | was named طراحی بانک داده و پیش نویس سند; resources مهندس بقایی → مهندس بقایی; مهندس جعفری |
| 36 | تهیه سند بانک داده | 2020-10-12 → 2020-12-28 (+77d) | 2020-10-13 → 2020-12-29 (+77d) |  | 62d → 7d |  | resources مهندس جعفری → مهندس جعفری; مهندس بقایی |

## Version 3 (data date 2020-10-04, saved 2020-10-20)

Note of the change: Update Gant2.mpp

Last finish stays 2021-01-09.

Changed:

| ID | Task | Complete |
| --- | --- | --- |
| 1 | **پروژه مواد شیمیایی** | 13% → 14% |
| 17 | **کد نویسی** | 18% → 20% |
| 18 | پیاده سازی زیر ساخت اپلیکیشن | 71% → 79% |
