# D:\BaharanSystem\Documents\GantChart

How a schedule from MS Project changed from version to version. A marks actual dates.

## Version 1 (data date 2020-10-04, saved 2020-10-21)

Note of the change: ایجاد شاخه مستندات

| ID | WBS | Task | Duration | Start | Finish | Predecessors | Complete | Total float | Constraint |
| --- | --- | --- | --- | --- | --- | --- | --- | --- | --- |
| 1 | 1 | **پروژه مواد شیمیایی** | 71d | 2020-10-03 A | 2021-01-09 |  | 14% | 0d |  |
| 2 |  | تهیه و تایید گانت چارت | 2d | 2020-10-03 A | 2020-10-04 A |  | 100% |  |  |
| 3 |  | تهیه نیازمندی های بازار مواد شیمیایی | 2d | 2020-10-05 A | 2020-10-06 A | 2 | 100% |  |  |
| 4 |  | تهیه انتظارات و خروجی نرم افزار برای رفع نیاز بازار | 1d | 2020-10-07 A | 2020-10-07 A | 3 | 100% |  |  |
| 5 |  | تهیه تحلیل کلی اپلیکیشن و خروجی مطلوب | 6d | 2020-10-10 A | 2020-10-17 A | 4 | 100% |  |  |
| 6 |  | تایید تحلیل کلی اپلیکیشن و خروجی مطلوب | 1d | 2020-10-18 | 2020-10-18 | 5 |  | 59d |  |
| 7 |  | تعیین ابزار و نرم افزارهای مورد استفاده در تولید | 1d | 2020-10-05 A | 2020-10-05 A | 2 | 100% |  |  |
| 8 |  | تهیه سند تحلیل و شمای کلی | 2d | 2020-10-19 A | 2020-10-20 A | 6 | 100% |  |  |
| 9 |  | تهیه چک لیست نیازمندی های اپلیکیشن | 1d | 2020-10-06 A | 2020-10-06 A | 2 | 100% |  |  |
| 10 |  | تهیه فرم های ابتدایی جهت ارائه داخلی | 0d | 2020-10-06 A | 2020-10-06 A | 9 | 100% |  |  |
| 11 |  | تهیه سندابزار مورد استفاده و نقشه راه | 1d | 2020-10-07 A | 2020-10-07 A | 7 | 100% |  |  |
| 12 |  | بررسی و تایید سندابزار مورد استفاده و نقشه راه | 0d | 2020-10-07 A | 2020-10-07 A | 11 | 100% |  |  |
| 13 |  | تست فرم های ابتدایی و ارائه نظر کارشناسی به صورت رسمی | 0d | 2020-10-06 A | 2020-10-06 A | 10 | 100% |  |  |
| 14 |  | رفع ایرادات احتمالی | 0d | 2020-10-06 A | 2020-10-06 A | 13 | 100% |  |  |
| 15 |  | تهیه تحلیل نسخه مقدماتی اپلیکیشن | 1d | 2020-10-10 | 2020-10-10 | 12 |  | 65d |  |
| 16 |  | شماتیک کلی اپلیکیشن | 1d | 2020-10-07 A | 2020-10-07 A | 14 | 100% |  |  |
| 17 | 1.16 | **کد نویسی** | 56d | 2020-10-10 A | 2020-12-26 |  | 21% | 7d |  |
| 18 |  | پیاده سازی زیر ساخت اپلیکیشن | 14d | 2020-10-10 A | 2020-10-27 | 16 | 86% | 7d |  |
| 19 |  | احراز هویت | 2d | 2020-10-28 | 2020-10-31 | 18 |  | 7d |  |
| 20 |  | فرمهای اصلی اپلیکیشن | 14d | 2020-11-01 | 2020-11-18 | 19 |  | 7d |  |
| 21 |  | درگاه پرداخت | 2d | 2020-11-21 | 2020-11-22 | 20 |  | 7d |  |
| 22 |  | وضعیت پرداخت | 2d | 2020-11-23 | 2020-11-24 | 21 |  | 7d |  |
| 23 |  | وضعیت سفارشات | 1d | 2020-11-25 | 2020-11-25 | 22 |  | 7d |  |
| 24 |  | مکان یابی روی نقشه | 1d | 2020-11-28 | 2020-11-28 | 23 |  | 7d |  |
| 25 |  | کیف پول | 2d | 2020-11-29 | 2020-11-30 | 24 |  | 7d |  |
| 26 |  | نحوه تحویل | 3d | 2020-12-01 | 2020-12-05 | 25 |  | 7d |  |
| 27 |  | نظرسنجی | 2d | 2020-12-06 | 2020-12-07 | 26 |  | 7d |  |
| 28 |  | سازکار رفع خطا | 2d | 2020-12-08 | 2020-12-09 | 27 |  | 7d |  |
| 29 |  | اتاق تبادل اطلاعات | 7d | 2020-12-12 | 2020-12-20 | 28 |  | 7d |  |
| 30 |  | کارتابل | 2d | 2020-12-21 | 2020-12-22 | 29 |  | 7d |  |
| 31 |  | موتور جستجو | 2d | 2020-12-23 | 2020-12-26 | 30 |  | 7d |  |
| 32 |  | تست نسخه مقدماتی اپلیکیشن | 41d | 2020-11-03 | 2020-12-29 | 20SS+2d, 31FF+2d |  | 7d | finish no earlier than 2020-12-29 |
| 33 |  | رفع خطاهای کشف شده در تست | 41d | 2020-11-03 | 2020-12-29 | 32SS |  | 7d | finish no earlier than 2020-10-03 |
| 34 |  | تحویل فرم های آماده شده | 41d | 2020-11-14 | 2021-01-09 | 33SS+7d |  | 0d |  |
| 35 |  | تهیه و تنظیم دستورالعمل کار با بانک داده | 1d | 2020-12-27 | 2020-12-27 | 31 |  | 7d |  |
| 36 |  | تهیه سند بانک داده | 2d | 2020-12-28 | 2020-12-29 | 35 |  | 7d | start no earlier than 2020-10-12 |

## Version 2 (data date 2020-10-04, saved 2020-10-28)

Note of the change: Update GantChart.mpp

Last finish 2021-01-09 → 2021-01-24 (+15d). Complete tasks 13 → 14.

Added:

| ID | Task | Duration | Start | Finish | Predecessors | Resources |
| --- | --- | --- | --- | --- | --- | --- |
| 17 | مطالعه پیرامون زیر ساخت اپلیکیشن | 1d? | 2020-10-07 | 2020-10-07 | 14 | مهندس بقایی |
| 18 | react native و VUE nativeمقایسه بین | 5d | 2020-10-14 A | 2020-10-20 A |  | مهندس بقایی |
| 21 | ردیابی | 2d | 2020-11-10 | 2020-11-11 | 20 | مهندس بقایی; مهندس جعفری |

Changed:

| ID | Task | Start | Finish | Duration | Complete | Predecessors |
| --- | --- | --- | --- | --- | --- | --- |
| 1 | **پروژه مواد شیمیایی** |  | 2021-01-09 → 2021-01-24 (+15d) | 71d → 82d? | 14% → 16% |  |
| 19 | **کد نویسی** | 2020-10-10 A → 2020-10-21 A (+11d) | 2020-12-26 → 2021-01-10 (+15d) | 56d → 58d |  |  |
| 20 | پیاده سازی زیر ساخت اپلیکیشن | 2020-10-10 A → 2020-10-21 A (+11d) | 2020-10-27 → 2020-11-09 (+13d) |  |  | 16 → 18 |
| 22 | احراز هویت | 2020-10-28 → 2020-11-14 (+17d) | 2020-10-31 → 2020-11-15 (+15d) |  |  | 20 → 21 |
| 23 | فرمهای اصلی اپلیکیشن | 2020-11-01 → 2020-11-16 (+15d) | 2020-11-18 → 2020-12-05 (+17d) |  |  |  |
| 24 | درگاه پرداخت | 2020-11-21 → 2020-12-06 (+15d) | 2020-11-22 → 2020-12-07 (+15d) |  |  |  |
| 25 | وضعیت پرداخت | 2020-11-23 → 2020-12-08 (+15d) | 2020-11-24 → 2020-12-09 (+15d) |  |  |  |
| 26 | وضعیت سفارشات | 2020-11-25 → 2020-12-12 (+17d) | 2020-11-25 → 2020-12-12 (+17d) |  |  |  |
| 27 | مکان یابی روی نقشه | 2020-11-28 → 2020-12-13 (+15d) | 2020-11-28 → 2020-12-13 (+15d) |  |  |  |
| 28 | کیف پول | 2020-11-29 → 2020-12-14 (+15d) | 2020-11-30 → 2020-12-15 (+15d) |  |  |  |
| 29 | نحوه تحویل | 2020-12-01 → 2020-12-16 (+15d) | 2020-12-05 → 2020-12-20 (+15d) |  |  |  |
| 30 | نظرسنجی | 2020-12-06 → 2020-12-21 (+15d) | 2020-12-07 → 2020-12-22 (+15d) |  |  |  |
| 31 | سازکار رفع خطا | 2020-12-08 → 2020-12-23 (+15d) | 2020-12-09 → 2020-12-26 (+17d) |  |  |  |
| 32 | اتاق تبادل اطلاعات | 2020-12-12 → 2020-12-27 (+15d) | 2020-12-20 → 2021-01-04 (+15d) |  |  |  |
| 33 | کارتابل | 2020-12-21 → 2021-01-05 (+15d) | 2020-12-22 → 2021-01-06 (+15d) |  |  |  |
| 34 | موتور جستجو | 2020-12-23 → 2021-01-09 (+17d) | 2020-12-26 → 2021-01-10 (+15d) |  |  |  |
| 35 | تست نسخه مقدماتی اپلیکیشن | 2020-11-03 → 2020-11-18 (+15d) | 2020-12-29 → 2021-01-13 (+15d) |  |  |  |
| 36 | رفع خطاهای کشف شده در تست | 2020-11-03 → 2020-11-18 (+15d) | 2020-12-29 → 2021-01-13 (+15d) |  |  |  |
| 37 | تحویل فرم های آماده شده | 2020-11-14 → 2020-11-29 (+15d) | 2021-01-09 → 2021-01-24 (+15d) |  |  |  |
| 38 | تهیه و تنظیم دستورالعمل کار با بانک داده | 2020-12-27 → 2021-01-11 (+15d) | 2020-12-27 → 2021-01-11 (+15d) |  |  |  |
| 39 | تهیه سند بانک داده | 2020-12-28 → 2021-01-12 (+15d) | 2020-12-29 → 2021-01-13 (+15d) |  |  |  |

## Version 3 (data date 2020-10-04, saved 2020-10-31)

Last finish stays 2021-01-24. Complete tasks 14 → 15.

Changed:

| ID | Task | Start | Finish | Duration | Complete | Total float | Other |
| --- | --- | --- | --- | --- | --- | --- | --- |
| 1 | **پروژه مواد شیمیایی** |  |  |  | 16% → 20% |  |  |
| 17 | مطالعه پیرامون زیر ساخت اپلیکیشن | 2020-10-07 → 2020-10-03 A (-4d) | 2020-10-07 → 2020-10-13 A (+6d) | 1d? → 9d? | 0% → 100% | 77d → none | constraint none → finish no earlier than 2020-10-13 |
